Schedule from a web Gantt chart, 2024-08-20 to 2024-09-30.
Every day is a working day

## Schedule

| ID | WBS | Task | Duration | Start | Finish | Predecessors | inPeople | Status |
| --- | --- | --- | --- | --- | --- | --- | --- | --- |
| 2 | 1 | 团队组建 | 1d | 2024-08-20 | 2024-08-20 |  |  |  |
| 3 | 2 | 场景－构想 | 2d | 2024-08-21 | 2024-08-22 |  | ＠营销 |  |
| 4 | 3 | 场景－实现方案提出（运动、交互等） | 2d | 2024-08-21 | 2024-08-22 |  | ＠营销＠BIT＠前瞻 |  |
| 5 | 4 | 场景－实现方案确认 | 3d | 2024-08-23 | 2024-08-25 | 4 | ＠营销＠前瞻 | waiting |
| 6 | 5 | 造型-风格输出 | 4d | 2024-08-21 | 2024-08-24 |  | @营销@造型 |  |
| 7 | 6 | 造型-方案设计 | 8d | 2024-08-25 | 2024-09-01 | 6 | @BIT | waiting |
| 8 | 7 | 造型-方案选定 | 1d | 2024-09-02 | 2024-09-02 | 7 | @营销@造型 | waiting |
| 9 | 8 | 造型-效果实现 | 12d | 2024-09-03 | 2024-09-14 | 8 | @BIT | waiting |
| 10 | 9 | 造型-效果验收 | 1d | 2024-09-15 | 2024-09-15 | 9 | @营销@造型 | waiting |
| 11 | 10 | 合同－预算 | 2d | 2024-08-21 | 2024-08-22 |  | ＠BIT |  |
| 12 | 11 | 合同-拟定 | 3d | 2024-08-21 | 2024-08-23 |  | @前瞻 |  |
| 13 | 12 | 合同-确认 | 4d | 2024-08-24 | 2024-08-27 | 12 | @BIT@法务 | waiting |
| 14 | 13 | 合同-签订 | 11d | 2024-08-28 | 2024-09-07 | 13 | @长安@BIT | waiting |
| 15 | 14 | 本体-改制 | 13d | 2024-09-03 | 2024-09-15 | 8 | @BIT | waiting |
| 16 | 15 | 本体-运动调试 | 15d | 2024-09-03 | 2024-09-17 |  | @BIT |  |
| 17 | 16 | 语音-方案提出 | 3d | 2024-08-26 | 2024-08-28 |  | @前瞻@BIT | waiting |
| 18 | 17 | 语音-方案确认 | 4d | 2024-08-29 | 2024-09-01 |  | @营销@前瞻 | waiting |
| 19 | 18 | 语音-方案实现 | 13d | 2024-09-02 | 2024-09-14 |  | @前瞻@梧桐@BIT | waiting |
| 20 | 19 | 语音-方案调试 | 3d | 2024-09-15 | 2024-09-17 |  | @前瞻@梧桐@BIT | waiting |
| 21 | 20 | 本体-运输 | 5d | 2024-09-18 | 2024-09-22 | 16 | @BIT | waiting |
| 22 | 21 | 现场-改造 | 22d | 2024-08-28 | 2024-09-18 |  | @营销 |  |
| 23 | 22 | 现场-联调 | 6d | 2024-09-23 | 2024-09-28 | 21 | @营销@BIT@前瞻 | waiting |
| 24 | 23 | 本体-操作指导 | 8d | 2024-09-23 | 2024-09-30 |  | @BIT | waiting |
